# Diplomarbeit

Schedule from Planner, 2018-10-27 to 2019-04-29.
Phase: Vorphase

## Calendars

- Default: Mon-Fri 08:00-12:00, 13:00-17:00; Sat-Sun off.

## Resources

| Resource | Rate |
| --- | --- |
| Andreas Zweili | 60 |

## Schedule

| ID | WBS | Task | Type | Duration | Start | Finish | Predecessors | Constraint | Resources | Work |
| --- | --- | --- | --- | --- | --- | --- | --- | --- | --- | --- |
| 1 | 1 | **Vorphase** |  |  | 2018-10-29 | 2018-10-27 |  |  |  |  |
| 2 | 1.1 | Diplomantrag abgeben | milestone | 0d | 2018-10-29 | 2018-10-27 |  | must start on 2018-10-27 | Andreas Zweili |  |
| 3 | 2 | **Planung** |  |  | 2018-12-10 | 2018-12-28 |  |  |  | 45h |
| 4 | 2.1 | Start Diplomarbeit | milestone | 0d | 2018-12-10 | 2018-12-10 |  | must start on 2018-12-10 | Andreas Zweili |  |
| 5 | 2.2 | Placeholder1 |  | 15d | 2018-12-10 | 2018-12-28 | 4 | start no earlier than 2018-12-10 | Andreas Zweili [38%] | 45h |
| 6 | 3 | **Durchführung** |  |  | 2018-12-31 | 2019-02-25 | 5 |  |  | 128h |
| 7 | 3.1 | Placeholder2 |  | 40d | 2018-12-31 | 2019-02-22 |  | start no earlier than 2018-12-10 | Andreas Zweili [38%] | 120h |
| 8 | 3.2 | Testing |  | 1d | 2019-02-25 | 2019-02-25 | 7 |  | Andreas Zweili | 8h |
| 9 | 4 | **Abschluss** |  |  | 2019-02-26 | 2019-04-26 | 8 |  |  | 50h |
| 10 | 4.1 | Arbeit korrigieren |  | 14d | 2019-02-26 | 2019-03-15 |  |  | Andreas Zweili [38%] | 42h |
| 11 | 4.2 | Diplomarbeit abgeben | milestone | 0d | 2019-03-18 | 2019-03-18 |  | must start on 2019-03-18 | Andreas Zweili |  |
| 12 | 4.3 | Präsentationen |  | 14d | 2019-03-25 | 2019-04-11 | 11 | start no earlier than 2019-03-25 | Andreas Zweili [7%] | 8h |
| 13 | 4.4 | Ausstellung | milestone | 0d | 2019-04-29 | 2019-04-27 |  | must start on 2019-04-27 | Andreas Zweili |  |
